Schedule from GanttProject, 2024-06-27 to 2025-02-27.

## Calendars

- Project calendar: Mon-Fri working; Sat-Sun off.

## Resources

| Resource | Group |
| --- | --- |
| RID Hydrology | project owner |
| RID Inspection committee | inspection committee |
| Project Manager |  |
| Project Coordinator |  |
| Database Admin |  |
| IT Specialist |  |
| System Analysis |  |
| Developer |  |
| System Integrator |  |
| Tester |  |
| Data Entry |  |
| Trainer |  |

## Schedule

| ID | WBS | Task | Duration | Start | Finish | Predecessors | Complete | Resources |
| --- | --- | --- | --- | --- | --- | --- | --- | --- |
| 1 | 1 | **Phase 1 Project planning** | 13d | 2024-06-27 | 2024-07-15 |  | 30% |  |
| 2 | 1.1 | ประชุมรวบรวมข้อมูลขอบเขตงาน | 1d | 2024-06-27 | 2024-06-27 |  | 100% | RID Hydrology; Project Manager; Project Coordinator |
| 3 | 1.2 | วิเคราะห์, ออกแบบ และ วางแผนดำเนินงาน | 3d | 2024-06-28 | 2024-07-02 | 2 | 100% | Database Admin; IT Specialist; System Analysis |
| 4 | 1.3 | ร่างเอกสารนำเสนอแผนดำเนินงาน | 3d | 2024-07-03 | 2024-07-05 | 3 |  | System Analysis |
| 5 | 1.4 | จัดทำเอกสารวิธีการดำเนินการ (Methodology) | 1d | 2024-07-08 | 2024-07-08 | 4 |  | System Analysis |
| 6 | 1.5 | จัดทำแผนการดำเนินงาน (Project Plan) | 1d | 2024-07-09 | 2024-07-09 | 5 |  | Project Manager; System Analysis |
| 7 | 1.6 | วางโครงสร้างองค์กรในการดำเนินโครงการ (Project organization structure) | 1d | 2024-07-10 | 2024-07-10 | 6 |  | Project Manager |
| 8 | 1.7 | กำหนดรายชื่อบุคลากรหลัก (Key Person) | 1d | 2024-07-11 | 2024-07-11 | 7 |  | Project Manager |
| 9 | 1.8 | สรุปรายการสิ่งส่งมอบ (Deliverables) | 1d | 2024-07-12 | 2024-07-12 | 8 |  | System Analysis; System Integrator |
| 10 | 1.9 | จัดประชุมเปิดโครงการ | 1d | 2024-07-15 | 2024-07-15 | 9 |  | RID Hydrology; RID Inspection committee; Project Manager; Project Coordinator |
| 11 | 2 | **Phase 2 ส่งมอบ Hardware และ จัดทำระบบฐานข้อมูลน้ำฝน** | 60d | 2024-06-27 | 2024-09-18 |  | 11% |  |
| 12 | 2.1 | Phase 2.1 Setup and Installation Hardware และ นำเสนอรายละเอียดคุณลักษณะเฉพาะตามภาคผนวก ข ใน TOR | 60d | 2024-06-27 | 2024-09-18 |  | 20% | System Integrator |
| 13 | 2.2 | **Phase 2.2 เอกสารสรุปความต้องการของระบบ และ Mock-up ฐานข้อมูลน้ำฝน** | 41d | 2024-07-16 | 2024-09-10 |  |  |  |
| 14 | 2.2.1 | ออกแบบโครงสร้างเว็บฐานข้อมูลน้ำฝน | 25d | 2024-07-16 | 2024-08-19 | 10 |  | RID Hydrology; Database Admin; IT Specialist; System Analysis |
| 15 | 2.2.2 | จัดทำ Mock-up เพื่อยืนยันความถุกต้อง | 15d | 2024-08-20 | 2024-09-09 | 14 |  | RID Hydrology; System Analysis; Developer |
| 16 | 2.2.3 | พัฒนาและปรับปรุงระบบเชื่อมโยงข้อมูลสถานีโทรมาตร | 1d | 2024-09-10 | 2024-09-10 | 15 |  | IT Specialist; Developer; Tester |
| 17 | 2.3 | ส่งมอบงาน และ จัดประชุมความคืบหน้าของโครงการ | 1d | 2024-09-11 | 2024-09-11 | 16 |  | RID Hydrology; RID Inspection committee; Project Manager; Project Coordinator; System Integrator |
| 18 | 3 | **Phase 3 ปรับปรุงข้อมูลน้ำฝนให้เป็นปัจจุบัน** | 43d | 2024-09-19 | 2024-11-18 |  |  |  |
| 19 | 3.1 | รวบรวม และ ปรับปรุงข้อมูลสถานีตรวจวัดน้ำฝน | 22d | 2024-09-19 | 2024-10-18 | 11 |  | RID Hydrology; Database Admin; IT Specialist; System Analysis; Developer; Data Entry |
| 20 | 3.2 | ปรับปรุง และ พัฒนาระบบฐานข้อมูลน้ำท่า | 42d | 2024-09-19 | 2024-11-15 | 11 |  | RID Hydrology; Developer; Tester |
| 21 | 3.3 | พัฒนาระบบตรวจสอบและนำเข้าข้อมูลน้ำฝน | 42d | 2024-09-19 | 2024-11-15 | 11 |  | RID Hydrology; Developer; Tester |
| 22 | 3.4 | จัดประชุมความคืบหน้าโครงการ | 1d | 2024-11-18 | 2024-11-18 | 19, 20, 21 |  | RID Hydrology; RID Inspection committee; Project Manager; Project Coordinator |
| 23 | 4 | **Phase 4 ย้ายข้อมูลจากฐานข้อมูลเก่ามายังฐานข้อมูลที่พัฒนาใหม่** | 68d | 2024-11-19 | 2025-02-20 |  |  |  |
| 24 | 4.1 | จัดทำผลการวิเคราะห์ข้อมูลน้ำฝน | 5d | 2024-11-19 | 2024-11-25 | 18 |  | System Analysis; Developer |
| 25 | 4.2 | แสดงผลและส่งออกรายงานในรูปแบบ .xlsx, .txt และ กราฟ | 2d | 2024-11-26 | 2024-11-27 | 24 |  | Developer |
| 26 | 4.3 | จัดทำระบบการบริการข้อมูลผ่าน API | 5d | 2024-11-28 | 2024-12-04 | 25 |  | Developer |
| 27 | 4.4 | จัดทำระบบกำหนดสิทธิผู้ใช้งานและการเข้าถึงข้อมูล | 5d | 2024-12-05 | 2024-12-11 | 26 |  | Developer |
| 28 | 4.5 | จัดทำระบบแจ้งเตือนการนำเข้าข้อมูล การรับ-ส่งข้อมูล และ การแก้ไขข้อมูล | 5d | 2024-12-12 | 2024-12-18 | 27 |  | Developer |
| 29 | 4.6 | จัดทำหน้าเว็บแสดงผล และ เปรียบเทียบช้อมูลของแต่ละสถานี | 10d | 2024-12-19 | 2025-01-01 | 28 |  | Developer |
| 30 | 4.7 | ดำเนินการย้ายฐานข้อมูลจากฐานข้อมูลเดิมมายังฐานข้อมูลที่พัฒนาใหม่ | 5d | 2025-01-02 | 2025-01-08 | 29 |  | Database Admin |
| 31 | 4.8 | พัฒนาและปรับปรุงระบบเชื่อมโยงข้อมูลสถานีโทรมาตร | 5d | 2025-01-09 | 2025-01-15 | 30 |  | Developer |
| 32 | 4.9 | จัดทำระบบสำรองข้อมูล และ การกู้คืน พร้อมทั้งตั้งค่าการสำรองข้อมูล | 5d | 2025-01-16 | 2025-01-22 | 31 |  | Database Admin |
| 33 | 4.10 | ทดสอบการใช้งานระบบ | 10d | 2025-01-23 | 2025-02-05 | 32 |  | Tester |
| 34 | 4.11 | จัดทำรายงานผลการทดสอบระบบ | 10d | 2025-02-06 | 2025-02-19 | 33 |  | RID Hydrology; System Analysis; Tester |
| 35 | 4.12 | จัดประชุมความคืบหน้าโครงการ | 1d | 2025-02-20 | 2025-02-20 | 34 |  | RID Hydrology; RID Inspection committee; Project Manager; Project Coordinator |

| ID | WBS | Task | Duration | Start | Finish | Predecessors | Resources |
| --- | --- | --- | --- | --- | --- | --- | --- |
| 36 | 5 | **Phase 5 จัดอบรม** | 5d | 2025-02-21 | 2025-02-27 | 23 |  |
| 37 | 5.1 | จัดอบรมระดับผู้ควบคุมระบบ (Administrator) | 1d | 2025-02-21 | 2025-02-21 | 23 | RID Hydrology; Trainer |
| 38 | 5.2 | จัดอบรมระดับเจ้าหน้าที่นำเข้าข้อมูล | 1d | 2025-02-24 | 2025-02-24 | 37 | RID Hydrology; Trainer |
| 39 | 5.3 | จัดอบรมระดับผู้ใช้งานทั่วไป | 2d | 2025-02-25 | 2025-02-26 | 38 | RID Hydrology; Trainer |
| 40 | 5.4 | จัดประชุมความคืบหน้าและปิดโครงการ | 1d | 2025-02-27 | 2025-02-27 | 39 | RID Hydrology; Tester |
